# CSM 3.2

Schedule from MS Project, 2006-04-20 to 2006-12-22, A marks actual dates.
NCI

## Calendars

- Standard: Mon-Fri 08:00-12:00, 13:00-17:00; Sat-Sun off. Exceptions (off unless hours are given): 2006-05-29.

## Resources

| Resource |
| --- |
| Charles |
| Avinash |
| Kunal |
| Orlando |
| Steven |
| Denise |
| BioPharm |
| Kuanl |
| Steve |
| QA |
| Tech Writing NCICB |
| Ch |

## Schedule

| ID | WBS | Task | Type | Duration | Start | Finish | Predecessors | Complete | Remaining | Total slack | Free slack | Constraint | Resources | Work | Actual work |
| --- | --- | --- | --- | --- | --- | --- | --- | --- | --- | --- | --- | --- | --- | --- | --- |
| 1 | 1 | **CSM 3.2** |  | 175d? | 2006-04-20 A | 2006-12-22 |  | 16% | 146.58d? | 0d |  |  |  | 4091h | 822.96h |
| 2 | 1.1 | **Elaboration** |  | 55.95d? | 2006-04-20 A | 2006-07-07 |  | 52% | 26.91d? | 119.05d |  |  |  | 1237.4h | 781.36h |
| 3 | 1.1.1 | **Iteration 1** |  | 34d? | 2006-04-20 A | 2006-06-07 |  | 75% | 8.56d? | 141d |  |  |  | 638.8h | 558.8h |
| 4 | 1.1 | Kick off | milestone | 0d | 2006-04-20 A | 2006-04-20 A |  | 100% |  |  |  | start no earlier than 2006-04-20 | Denise; Charles; Orlando; Steven; Avinash |  |  |
| 5 | 1.1.1.2 | **21 CFR Part 11** |  | 34d | 2006-04-20 A | 2006-06-07 |  | 35% | 22.1d | 141d |  |  |  | 205.6h | 173.6h |
| 6 | 1.1.1.2.1 | Preperation |  | 7d | 2006-04-20 A | 2006-04-28 A |  | 100% |  |  |  |  | Charles [10%]; Orlando; Steven; Kunal | 173.6h | 173.6h |
| 7 | 1.1.1.2.2 | Kickoff Meeting With Biopharm | milestone | 0d | 2006-05-01 A | 2006-05-01 A |  | 100% |  |  |  | start no earlier than 2006-05-01 | Charles [10%]; Orlando; Steven; Kunal |  |  |
| 8 | 1.1.1.2.3 | Biopharm resources allocated | milestone | 0d | 2006-05-15 | 2006-05-15 |  |  |  | 119d | 0d | start no earlier than 2006-05-15 | BioPharm |  |  |
| 9 | 1.1.1.2.4 | Deliver Materials |  | 3d | 2006-05-17 | 2006-05-19 | 8FS+2d |  |  | 119d | 0d |  | Steven | 24h |  |
| 10 | 1.1.1.2.5 | Provide Validation Support |  | 10d | 2006-05-22 | 2006-06-07 | 9 |  |  | 117d |  |  | Steven [10%] | 8h |  |
| 11 | 1.1.1.3 | **Project Scope** |  | 20d? | 2006-05-01 A | 2006-05-26 |  | 88% | 2.38d? | 148d |  |  |  | 382h | 334h |
| 12 | 1.1.1.3.1 | Create/Revise Candidate Requirements Document |  | 4d | 2006-05-01 A | 2006-05-04 A | 6 | 100% |  |  |  |  | Charles [10%]; Steven; Orlando; Kunal | 99.2h | 99.2h |
| 13 | 1.2 | Revised Scope w/Product Manager | milestone | 0d | 2006-05-04 A | 2006-05-04 A |  | 100% |  |  |  |  | Charles; Avinash |  |  |
| 14 | 1.1.1.3.3 | Define Elaboration Task Plan |  | 1d? | 2006-05-05 A | 2006-05-05 A | 12 | 100% |  |  |  |  | Charles [10%]; Orlando; Kunal; Steven | 24.8h | 24.8h |
| 15 | 1.1.1.3.4 | Create/Update Scope Document |  | 15d | 2006-05-08 A | 2006-05-26 A | 14 | 100% |  |  |  |  | Charles [10%] | 12h | 12h |
| 16 | 1.1.1.3.5 | Obtain Changes/Fixes from BMS and map to current scope |  | 4d | 2006-05-15 A | 2006-05-18 A |  | 100% |  |  |  | start no earlier than 2006-05-15 | Steven [90%] | 28.8h | 28.8h |
| 17 | 1.1.1.3.6 | **LOE/Requirements Gathering** |  | 14d | 2006-05-08 A | 2006-05-25 | 14 | 77% | 3.17d | 149d |  |  |  | 217.2h | 169.2h |
| 18 | 1.1.1.3.6.1 | Obtain exact JDK version for next release |  | 0.25d | 2006-05-08 A | 2006-05-08 A |  | 100% |  |  |  |  | Kunal | 2h | 2h |
| 19 | 1.1.1.3.6.2 | High Level Diagram of Grid-CSM Integration |  | 2d | 2006-05-08 A | 2006-05-10 A | 18 | 100% |  |  |  |  | Kunal | 16h | 16h |
| 20 | 1.1.1.3.6.3 | High Level Diagram of CSM Web Service |  | 1d | 2006-05-10 A | 2006-05-11 A | 19 | 100% |  |  |  |  | Kunal | 8h | 8h |
| 21 | 1.1.1.3.6.4 | Deliver Diagrams to Avinash | milestone | 0d | 2006-05-11 A | 2006-05-11 A | 20 | 100% |  |  |  |  | Kuanl |  |  |
| 22 | 1.1.1.3.6.5 | IMF Presentation |  | 2d | 2006-05-11 A | 2006-05-15 A | 21 | 100% |  |  |  |  | Kunal | 16h | 16h |
| 23 | 1.1.1.3.6.6 | Estimate Tying User to Application |  | 1d | 2006-05-15 A | 2006-05-16 A | 22 | 100% |  |  |  |  | Kunal | 8h | 8h |
| 24 | 1.1.1.3.6.7 | Estimate for Grid Integration/ Project Scope Doc |  | 6d | 2006-05-16 | 2006-05-24 | 23 |  |  | 27.8d |  |  | Kunal | 48h |  |
| 25 | 1.1.1.3.6.8 | Meet with Apps for Performance Requirements |  | 0.25d | 2006-05-11 A | 2006-05-11 A |  | 100% |  |  |  | start no earlier than 2006-05-11 | Kunal; Orlando | 4h | 4h |
| 26 | 1.1.1.3.6.9 | Prototyp Generic LDAP |  | 2.5d | 2006-05-08 A | 2006-05-10 A |  | 100% |  |  |  |  | Orlando | 20h | 20h |
| 27 | 1.1.1.3.6.10 | Estimate Auth Policy Caching |  | 3d | 2006-05-10 A | 2006-05-15 A | 26 | 100% |  |  |  |  | Orlando | 24h | 24h |
| 28 | 1.1.1.3.6.11 | Estimate CLM Logging to text file and Log Viewer Mods |  | 2d | 2006-05-15 A | 2006-05-17 A | 27 | 100% |  |  |  |  | Orlando | 16h | 16h |
| 29 | 1.1.1.3.6.12 | Estimate BMS Webservice Integration |  | 2.5d | 2006-05-17 A | 2006-05-19 A | 28 | 100% |  |  |  |  | Orlando | 20h | 20h |
| 30 | 1.1.1.3.6.13 | Estimate BMS Integration Work |  | 4d | 2006-05-22 A | 2006-05-25 A | 29 | 100% |  |  |  |  | Orlando; Charles [10%] | 35.2h | 35.2h |
| 31 | 1.1.1.4 | NCICB Management Review Complete | milestone | 0d | 2006-05-17 A | 2006-05-17 A |  | 100% |  |  |  | start no earlier than 2006-05-17 |  |  |  |
| 32 | 1.1.1.5 | Update Scope |  | 2.95d | 2006-05-26 A | 2006-05-31 A | 17 | 100% |  |  |  |  | Charles [10%]; Orlando; Kunal | 49.6h | 49.6h |
| 33 | 1.1.1.6 | User Feedback Sessions Complete | milestone | 0d | 2006-05-26 A | 2006-05-26 A |  | 100% |  |  |  | start no earlier than 2006-05-26 |  |  |  |
| 34 | 1.1.1.8 | Revise Task Plan |  | 2d | 2006-05-31 A | 2006-06-02 A | 32 | 100% |  |  |  |  | Charles [10%] | 1.6h | 1.6h |

| ID | WBS | Task | Type | Duration | Start | Finish | Predecessors | Complete | Remaining | Total slack | Free slack | Constraint | Resources | Work | Actual work |
| --- | --- | --- | --- | --- | --- | --- | --- | --- | --- | --- | --- | --- | --- | --- | --- |
| 35 | 1.1.2 | **Iteration 2** |  | 22.95d | 2006-05-19 A | 2006-06-21 |  | 80% | 4.48d | 131.05d |  |  |  | 245h | 222.56h |
| 36 | 1.1.2.1 | **Detail Requirements** |  | 18.95d | 2006-05-19 A | 2006-06-15 |  | 95% | 0.93d | 101.85d | 0d |  |  | 241h | 222.56h |
| 37 | 1.1.2.1.1 | **Define Use Cases** |  | 18.95d | 2006-05-19 A | 2006-06-15 |  | 95% | 0.93d | 101.85d |  |  |  | 241h | 222.56h |
| 38 | 1.1.2.1.1.1 | **UPT** |  | 10.5d | 2006-05-19 A | 2006-06-05 A |  | 100% |  |  |  |  |  | 68.4h | 68.4h |
| 39 | 1.1.2.1.1.1.1 | Write Initial Draft 30% |  | 1.5d | 2006-05-19 A | 2006-05-22 A | 16 | 100% |  |  |  |  | Steven | 12h | 12h |
| 40 | 1.1.2.1.1.1.2 | Write Internal Review 60 % |  | 1.5d | 2006-05-22 A | 2006-05-23 A | 39 | 100% |  |  |  |  | Steven | 12h | 12h |
| 41 | 1.1.2.1.1.1.3 | Write Final Complete 100% |  | 2d | 2006-05-24 A | 2006-05-25 A | 40 | 100% |  |  |  |  | Steven | 16h | 16h |
| 42 | 1.1.2.1.1.1.4 | Review |  | 1d | 2006-05-26 A | 2006-05-31 A | 41 | 100% |  |  |  |  | Steven; Charles [10%] | 4.4h | 4.4h |
| 43 | 1.1.2.1.1.1.5 | Update per Review |  | 3d | 2006-05-31 A | 2006-06-05 A | 42 | 100% |  |  |  |  | Steven | 24h | 24h |
| 44 | 1.1.2.1.1.2 | **Web Service** |  | 7d | 2006-05-31 A | 2006-06-09 A |  | 100% |  |  |  |  |  | 64.2h | 64.2h |
| 45 | 1.1.2.1.1.2.1 | Write Internal Review 60% |  | 5d | 2006-05-31 A | 2006-06-07 A | 32 | 100% |  |  |  |  | Kunal | 40h | 40h |
| 46 | 1.1.2.1.1.2.2 | Write Final Complete 100% |  | 1d | 2006-06-07 A | 2006-06-08 A | 45 | 100% |  |  |  |  | Kunal | 8h | 8h |
| 47 | 1.1.2.1.1.2.3 | Review |  | 0.25d | 2006-06-08 A | 2006-06-09 A | 46 | 100% |  |  |  |  | Kunal; Steve; Charles [10%] | 4.2h | 4.2h |
| 48 | 1.1.2.1.1.2.4 | Update per Review |  | 0.75d | 2006-06-09 A | 2006-06-09 A | 47 | 100% |  |  |  |  | Kunal; Steve | 12h | 12h |
| 49 | 1.1.2.1.1.3 | **CSM APIs** |  | 7.5d | 2006-05-31 A | 2006-06-12 |  | 92% | 0.6d | 105.35d | 0d |  |  | 68.2h | 61.76h |
| 50 | 1.1.2.1.1.3.1 | Write Initial Draft 30% |  | 2.5d | 2006-05-31 A | 2006-06-05 A | 32 | 100% |  |  |  |  | Orlando | 20h | 20h |
| 51 | 1.1.2.1.1.3.2 | Write Internal Review 60 % |  | 2d | 2006-06-05 A | 2006-06-07 A | 50 | 100% |  |  |  |  | Orlando | 16h | 16h |
| 52 | 1.1.2.1.1.3.3 | Write Final Complete 100% |  | 2d | 2006-06-07 A | 2006-06-09 | 51 | 80% | 0.4d | 105.35d | 0d |  | Orlando | 16h | 12.8h |
| 53 | 1.1.2.1.1.3.4 | Review |  | 0.25d | 2006-06-09 A | 2006-06-09 | 52 | 80% | 0.05d | 105.95d | 0d |  | Orlando; Steve; Charles [10%] | 4.2h | 3.36h |
| 54 | 1.1.2.1.1.3.5 | Update per Review |  | 0.75d | 2006-06-09 A | 2006-06-12 | 53 | 80% | 0.15d | 105.35d |  |  | Orlando; Steve | 12h | 9.6h |
| 55 | 1.1.2.1.1.4 | **- Performance Enhancements** |  | 4d | 2006-06-09 A | 2006-06-15 |  | 81% | 0.75d | 5.05d | 1.05d |  |  | 40.2h | 28.2h |
| 56 | 1.1.2.1.1.4.1 | Write Internal Review 60% |  | 2d | 2006-06-09 A | 2006-06-13 A | 44 | 100% |  |  |  |  | Kunal | 16h | 16h |
| 57 | 1.1.2.1.1.4.2 | Write Final Complete 100% |  | 1d | 2006-06-13 A | 2006-06-14 A | 56 | 100% |  |  |  |  | Kunal | 8h | 8h |
| 58 | 1.1.2.1.1.4.3 | Review |  | 0.25d | 2006-06-14 A | 2006-06-15 A | 57 | 100% |  |  |  |  | Kunal; Steve; Charles [10%] | 4.2h | 4.2h |
| 59 | 1.1.2.1.1.4.4 | Update per Review |  | 0.75d | 2006-06-15 | 2006-06-15 | 58 |  |  | 2.05d | 0d |  | Kunal; Steve | 12h |  |
| 60 | 1.1.2.3 | Revise Scope Document |  | 1d | 2006-06-14 | 2006-06-15 | 36FS-1d |  |  | 131.05d | 0d |  | Charles [10%] | 0.8h |  |
| 61 | 1.1.2.4 | Revised Scope Document Complete | milestone | 0d | 2006-06-13 | 2006-06-13 |  |  |  | 138d |  | start no earlier than 2006-06-13 |  |  |  |
| 62 | 1.1.2.7 | Revise Task Plan |  | 4d | 2006-06-15 | 2006-06-21 | 60 |  |  | 131.05d |  |  | Charles [10%] | 3.2h |  |
| 63 | 1.1.2.8 | Revised PM Project Plan Submitted | milestone | 0d | 2006-06-19 | 2006-06-19 |  |  |  | 129d | 0d | start no earlier than 2006-06-19 |  |  |  |

| ID | WBS | Task | Type | Duration | Start | Finish | Predecessors | Total slack | Free slack | Constraint | Resources | Work |
| --- | --- | --- | --- | --- | --- | --- | --- | --- | --- | --- | --- | --- |
| 64 | 1.1.3 | **Iteration 3** |  | 19.5d | 2006-06-12 | 2006-07-07 |  | 8.55d |  |  |  | 353.6h |
| 65 | 1.1.3.1 | **Test Plan** |  | 16d | 2006-06-15 | 2006-07-07 |  | 119.05d |  |  |  | 128h |
| 66 | 1.1.3.1 | Review Testability of Requirements |  | 4d | 2006-06-15 | 2006-06-21 | 59 | 116.55d | 0d |  | Steven | 32h |
| 67 | 1.1.3.2 | Test Plan Development Intial Template Draft |  | 2d | 2006-06-21 | 2006-06-23 | 66 | 116.55d | 0d |  | Steven | 16h |
| 68 | 1.1.3.3 | Test Plan Development 80% Completion |  | 6d | 2006-06-23 | 2006-07-03 | 67 | 119.05d | 0d |  | Steven | 48h |
| 69 | 1.1.3.4 | Test Plan Development Internal Review 100% Completion |  | 2d | 2006-07-03 | 2006-07-05 | 68 | 119.05d | 0d |  | Steven | 16h |
| 70 | 1.1.3.5 | Test Plan Development Rework |  | 2d | 2006-07-05 | 2006-07-07 | 69 | 119.05d |  |  | Steven | 16h |
| 71 | 1.1.3.2 | **Design** |  | 12.55d | 2006-06-12 | 2006-06-28 |  | 8.55d |  |  |  | 84h |
| 72 | 1.1.3.2.1 | **Create General Design Document** |  | 5d | 2006-06-12 | 2006-06-19 | 49 | 105.35d |  |  |  | 20h |
| 73 | 1.1.3.2.1.1 | Review Draft at 50% |  | 2.5d | 2006-06-12 | 2006-06-14 |  | 105.35d | 0d |  | Orlando | 20h |
| 74 | 1.1.3.2.1.2 | Complete Draft/Final Review |  | 2.5d | 2006-06-14 | 2006-06-19 | 73 | 105.35d | 0d |  |  |  |
| 75 | 1.1.3.2.2 | General Design Doc Posted for Review | milestone | 0d | 2006-06-19 | 2006-06-19 |  | 4d | 0d | start no earlier than 2006-06-19 | Orlando; Steve; Kunal |  |
| 76 | 1.1.3.2.3 | **Performance** |  | 5d | 2006-06-19 | 2006-06-23 | 75 | 4d |  |  |  | 40h |
| 77 | 1.1.3.7 | Performance Design Peparation |  | 3.5d | 2006-06-19 | 2006-06-22 | 55 | 4d | 0d |  | Kunal | 28h |
| 78 | 1.1.3.8 | Performance Design Internal Review |  | 0.5d | 2006-06-22 | 2006-06-22 | 77 | 4d | 0d |  | Kunal | 4h |
| 79 | 1.1.3.9 | Performance Design Rework |  | 1d | 2006-06-23 | 2006-06-23 | 78 | 4d | 0d |  | Kunal | 8h |
| 80 | 1.1.3.13 | CSM SAD |  | 3d | 2006-06-26 | 2006-06-28 | 79 | 4d | 0d |  | Kunal | 24h |
| 81 | 1.1.3.3 | **UML Model** |  | 8.55d | 2006-06-19 | 2006-06-30 |  | 105.35d |  |  |  | 17.6h |
| 82 | 1.1.2.5 | Update CSM Model |  | 2d | 2006-06-19 | 2006-06-21 | 74 | 105.35d | 0d |  | Orlando | 16h |
| 83 | 1.1.3.3.2 | Submit For Approval |  | 0.2d | 2006-06-21 | 2006-06-21 | 82 | 105.35d | 0d |  | Orlando | 1.6h |
| 84 | 1.1.2.6 | UML Model Changes Approved | milestone | 0d | 2006-06-30 | 2006-06-30 |  | 125d |  | start no earlier than 2006-06-30 |  |  |
| 85 | 1.1.3.6 | **Prototype** |  | 10.35d | 2006-06-21 | 2006-07-05 |  | 9.35d |  |  |  | 120h |
| 86 | 1.1.3.6.1 | Auth Caching |  | 4d | 2006-06-29 | 2006-07-04 | 80 | 4d | 0d |  | Kunal | 32h |
| 87 | 1.1.3.6.2 | Auth Caching - Review and Baselining |  | 1d | 2006-07-05 | 2006-07-05 | 86 | 4d | 0d |  | Kunal | 8h |
| 88 | 1.1.3.6.3 | Open/Active Directory LDAP |  | 4d | 2006-06-21 | 2006-06-27 | 83 | 105.35d | 0d |  | Orlando | 32h |
| 89 | 1.1.3.6.4 | Open/Active Directory LDAP - Code Review and Baselining |  | 1d | 2006-06-27 | 2006-06-28 | 88 | 105.35d | 0d |  | Orlando | 8h |
| 90 | 1.1.3.6.5 | Schema Support for SQL Server |  | 4d | 2006-06-28 | 2006-07-04 | 89 | 105.35d | 0d |  | Orlando | 32h |
| 91 | 1.1.3.6.6 | Schema Support for SQL Server - Code Review and Baselining |  | 1d | 2006-07-04 | 2006-07-05 | 90 | 105.35d | 0d |  | Orlando | 8h |
| 92 | 1.1.3.5 | Finalize Scope/Project Plan |  | 5d | 2006-06-19 | 2006-06-23 | 63 | 129d |  |  | Charles [10%] | 4h |
| 93 | 1.1.3.6 | Final 3.2 Scope/Project Plan to Gforge | milestone | 0d | 2006-06-26 | 2006-06-26 |  | 129d |  | start no earlier than 2006-06-26 |  |  |

| ID | WBS | Task | Type | Duration | Start | Finish | Predecessors | Complete | Remaining | Total slack | Free slack | Constraint | Resources | Work | Actual work |
| --- | --- | --- | --- | --- | --- | --- | --- | --- | --- | --- | --- | --- | --- | --- | --- |
| 94 | 1.2 | **Construction** |  | 112.05d | 2006-06-23 A | 2006-11-28 |  | 2% | 110.18d | 17d |  |  |  | 2173.6h | 41.6h |
| 95 | 1.2.1 | Production Support |  | 80d | 2006-07-12 | 2006-10-31 |  |  |  | 37d |  | start no earlier than 2006-07-12 | Orlando [15%]; Kunal [15%]; Steven [15%] | 273.6h |  |
| 96 | 1.2.2 | **Iteration 1** |  | 26.05d | 2006-06-23 A | 2006-07-31 |  | 11% | 23.13d | 103d |  |  |  | 404h | 41.6h |
| 97 | 1.2.2.1 | **Hibernate 3.1 Upgrade/JDK Backwards Compatibility/MySQL Upgrade Test** |  | 6d | 2006-07-05 | 2006-07-13 |  |  |  | 105.35d |  |  |  | 48h |  |
| 98 | 1.2.2.1.1 | Development |  | 5d | 2006-07-05 | 2006-07-12 | 91 |  |  | 105.35d | 0d |  | Orlando | 40h |  |
| 99 | 1.2.2.1.2 | Regression Testing |  | 1d | 2006-07-12 | 2006-07-13 | 98 |  |  | 105.35d | 0d |  | Orlando | 8h |  |
| 100 | 1.2.2.2 | **Open LDAP/Active Directory Authorization** |  | 4d | 2006-07-13 | 2006-07-19 |  |  |  | 105.35d |  |  |  | 32h |  |
| 101 | 1.2.2.2.1 | Design |  | 1d | 2006-07-13 | 2006-07-14 | 99 |  |  | 105.35d | 0d |  | Orlando | 8h |  |
| 102 | 1.2.2.2.2 | Development/Unit Test |  | 3d | 2006-07-14 | 2006-07-19 | 101 |  |  | 105.35d | 0d |  | Orlando | 24h |  |
| 103 | 1.2.2.3 | **Auth Policy Caching** |  | 14d | 2006-07-06 | 2006-07-25 |  |  |  | 4d |  |  |  | 112h |  |
| 104 | 1.2.2.3.1 | Design |  | 1d | 2006-07-06 | 2006-07-06 | 87 |  |  | 4d | 0d |  | Kunal | 8h |  |
| 105 | 1.2.2.3.2 | Development/Unit Testing |  | 13d | 2006-07-07 | 2006-07-25 | 104 |  |  | 4d | 0d |  | Kunal | 104h |  |
| 106 | 1.2.2.4 | **BMS Web Service Integration** |  | 6d | 2006-07-19 | 2006-07-27 |  |  |  | 105.35d |  |  |  | 48h |  |
| 107 | 1.2.2.4.1 | Design |  | 1d | 2006-07-19 | 2006-07-20 | 102 |  |  | 105.35d | 0d |  | Orlando | 8h |  |
| 108 | 1.2.2.4.2 | Development/Unit Test |  | 5d | 2006-07-20 | 2006-07-27 | 107 |  |  | 105.35d | 0d |  | Orlando | 40h |  |
| 109 | 1.2.2.5 | Components Deployed on Dev Server | milestone | 0d | 2006-07-27 | 2006-07-27 | 108 |  |  | 105.35d |  |  | Kunal; Orlando |  |  |
| 110 | 1.2.2.6 | **Regression Test Complete Code Coverage** |  | 6.5d | 2006-06-23 A | 2006-07-04 |  | 80% | 1.3d | 116.55d |  |  |  | 52h | 41.6h |
| 111 | 1.2.2.6.1 | Implementation |  | 6.5d | 2006-06-23 A | 2006-07-04 | 67 | 80% | 1.3d | 116.55d | 0d |  | Steven | 52h | 41.6h |
| 112 | 1.2.2.7 | QA Test |  | 6d | 2006-07-04 | 2006-07-20 | 111 |  |  | 110.55d |  |  | Steven | 48h |  |
| 113 | 1.2.2.8 | Testing Support |  | 4d | 2006-07-26 | 2006-07-31 | 105 |  |  | 4d | 0d |  | Kunal; Orlando | 64h |  |
| 114 | 1.2.3 | **Iteration 2** |  | 53d | 2006-08-01 | 2006-10-12 | 113 |  |  | 4d |  |  |  | 952h |  |
| 115 | 1.2.3.1 | **Application Specific UPT and APIs** |  | 7d | 2006-08-01 | 2006-08-09 |  |  |  | 6d |  |  |  | 56h |  |
| 116 | 1.2.3.1.1 | Design |  | 2d | 2006-08-01 | 2006-08-02 | 113 |  |  | 6d | 0d |  | Orlando | 16h |  |
| 117 | 1.2.3.1.2 | Development/Unit Test |  | 5d | 2006-08-03 | 2006-08-09 | 116 |  |  | 6d | 0d |  | Orlando | 40h |  |

| ID | WBS | Task | Type | Duration | Start | Finish | Predecessors | Total slack | Free slack | Constraint | Resources | Work |
| --- | --- | --- | --- | --- | --- | --- | --- | --- | --- | --- | --- | --- |
| 118 | 1.2.3.2 | **Improve Exception Handling** |  | 5d | 2006-08-10 | 2006-08-16 |  | 6d |  |  |  | 40h |
| 119 | 1.2.3.2.1 | Development/Unit Test |  | 5d | 2006-08-10 | 2006-08-16 | 117 | 6d | 0d |  | Orlando | 40h |
| 120 | 1.2.3.3 | **Performance Enhancements** |  | 9d | 2006-08-01 | 2006-08-11 |  | 4d |  |  |  | 72h |
| 121 | 1.2.3.3.1 | **Fix Update Methods** |  | 3d | 2006-08-01 | 2006-08-03 |  | 4d |  |  |  | 24h |
| 122 | 1.2.3.3.1.1 | Development/Unit Test |  | 3d | 2006-08-01 | 2006-08-03 | 113 | 4d | 0d |  | Kunal | 24h |
| 123 | 1.2.3.3.2 | **SDK Instance Level Security** |  | 6d | 2006-08-04 | 2006-08-11 |  | 4d | 0d |  |  | 48h |
| 124 | 1.2.3.3.2.1 | Design |  | 6d | 2006-08-04 | 2006-08-11 | 122 | 4d |  |  | Kunal | 48h |
| 125 | 1.2.3.4 | **Grid SAML Assertion Support** |  | 20d | 2006-08-14 | 2006-09-08 |  | 4d |  |  |  | 160h |
| 126 | 1.2.3.4.1 | Design |  | 5d | 2006-08-14 | 2006-08-18 | 123 | 4d | 0d |  | Kunal | 40h |
| 127 | 1.2.3.4.2 | Development |  | 15d | 2006-08-21 | 2006-09-08 | 126 | 4d | 0d |  | Kunal | 120h |
| 128 | 1.2.3.5 | **Secure SDK interfaces** |  | 10d | 2006-09-11 | 2006-09-22 |  | 4d |  |  |  | 80h |
| 129 | 1.2.3.5.1 | Design |  | 2d | 2006-09-11 | 2006-09-12 | 127 | 4d | 0d |  | Kunal | 16h |
| 130 | 1.2.3.5.2 | Development |  | 8d | 2006-09-13 | 2006-09-22 | 129 | 4d | 0d |  | Kunal | 64h |
| 131 | 1.2.3.6 | **BMS Code Integration** |  | 15d | 2006-08-17 | 2006-09-06 |  | 6d |  |  |  | 120h |
| 132 | 1.2.3.6.1 | Design |  | 2d | 2006-08-17 | 2006-08-18 | 119 | 6d | 0d |  | Orlando | 16h |
| 133 | 1.2.3.6.2 | Development |  | 13d | 2006-08-21 | 2006-09-06 | 132 | 6d | 0d |  | Orlando | 104h |
| 134 | 1.2.3.7 | **Defect Fixes** |  | 17d | 2006-09-07 | 2006-09-29 |  | 4d | 0d |  |  | 160h |
| 135 | 1.2.3.7.1 | Development/Unit Test |  | 15d | 2006-09-07 | 2006-09-27 | 133 | 6d | 0d |  | Orlando | 120h |
| 136 | 1.2.3.7.2 | Development/Unit Test |  | 5d | 2006-09-25 | 2006-09-29 | 130 | 4d | 0d |  | Kunal | 40h |
| 137 | 1.2.3.8 | Deploy Components to Dev Server | milestone | 0d | 2006-09-29 | 2006-09-29 | 135, 136 | 59d |  |  | Orlando; Kunal |  |
| 138 | 1.2.3.9 | **Testing** |  | 53d | 2006-08-01 | 2006-10-12 |  | 34d | 0d |  |  | 264h |
| 139 | 1.2.3.9.1 | Load & Component Test Development |  | 15d | 2006-08-01 | 2006-08-21 |  | 63d | 27d |  | Steven | 120h |
| 140 | 1.2.3.9.2 | QA Test Components |  | 9d | 2006-10-02 | 2006-10-12 | 139, 134 | 34d |  |  | QA | 72h |
| 141 | 1.2.3.9.3 | Test Support |  | 9d | 2006-10-02 | 2006-10-12 | 134 | 34d |  |  | Orlando [50%]; Kunal [50%] | 72h |
| 142 | 1.2.3.9.4 | Integration System Testing Comple (QA) | milestone | 0d | 2006-10-12 | 2006-10-12 |  | 35d |  | start no earlier than 2006-10-12 |  |  |

| ID | WBS | Task | Type | Duration | Start | Finish | Predecessors | Total slack | Free slack | Constraint | Resources | Work |
| --- | --- | --- | --- | --- | --- | --- | --- | --- | --- | --- | --- | --- |
| 143 | 1.2.4 | **Iteration 3** |  | 33d | 2006-10-13 | 2006-11-28 |  | 17d |  |  |  | 544h |
| 144 | 1.2.4.1 | **Internal System** |  | 14d | 2006-10-13 | 2006-11-01 |  | 34d |  |  |  | 224h |
| 145 | 1.2.4.1.1 | Execution |  | 14d | 2006-10-13 | 2006-11-01 | 138 | 36d |  |  | QA | 112h |
| 146 | 1.2.4.1.2 | Test Support |  | 14d | 2006-10-13 | 2006-11-01 | 138 | 34d | 0d |  | Orlando [50%]; Kunal [50%] | 112h |
| 147 | 1.2.5 | Internal System Testing Complete (QA Tier) | milestone | 0d | 2006-11-01 | 2006-11-01 |  | 37d |  | start no earlier than 2006-11-01 |  |  |
| 148 | 1.2.4.2 | Push Candidate to Staging |  | 2d | 2006-11-02 | 2006-11-03 | 146 | 34d |  |  | Kunal; Orlando | 32h |
| 149 | 1.2.6 | Release Candidate pushed to Stage Tier | milestone | 0d | 2006-11-03 | 2006-11-03 |  | 2d | 0d | start no earlier than 2006-11-03 |  |  |
| 150 | 1.2.4.4 | **Regression/UAT Testing** |  | 18d | 2006-11-03 | 2006-11-28 |  | 2d |  |  |  | 288h |
| 151 | 1.2.4.4.1 | Execution |  | 18d | 2006-11-03 | 2006-11-28 | 149 | 17d |  |  | QA | 144h |
| 152 | 1.2.4.4.2 | Test Support |  | 18d | 2006-11-03 | 2006-11-28 | 149 | 2d | 0d |  | Orlando [50%]; Kunal [50%] | 144h |
| 153 | 1.2.7 | UAT Complete | milestone | 0d | 2006-11-28 | 2006-11-28 |  | 18d |  | start no earlier than 2006-11-28 |  |  |
| 154 | 1.3 | **Transition** |  | 59d? | 2006-10-02 | 2006-12-22 |  | 0d |  |  |  | 680h |
| 155 | 1.3.1 | **Documentation** |  | 55d? | 2006-10-02 | 2006-12-15 |  | 4d |  |  |  | 440h |
| 156 | 1.3.1.1 | Write Draft Documentation/ Update User Guide |  | 9d | 2006-10-02 | 2006-10-12 | 134 | 4d | 0d |  | Orlando [50%]; Kunal [50%] | 72h |
| 157 | 1.3.1.2 | Draft Documentation/User Documentation Completed | milestone | 0d | 2006-10-12 | 2006-10-12 |  | 51d |  | start no earlier than 2006-10-12 |  |  |
| 158 | 1.3.1.3 | Review Technical/User Docs |  | 21d | 2006-10-13 | 2006-11-10 | 156 | 4d | 0d |  | Tech Writing NCICB | 168h |
| 159 | 1.3.1.4 | Review Technical/User Docs Complete | milestone | 0d | 2006-11-10 | 2006-11-10 |  | 30d |  | start no earlier than 2006-11-10 |  |  |
| 160 | 1.3.1.5 | Incorporate Comments to User Docs |  | 1d? | 2006-11-13 | 2006-11-13 | 158 | 4d | 0d |  | Orlando [50%]; Kunal [50%] | 8h |
| 161 | 1.3.1.6 | Incorporate Comments to User Docs Complete | milestone | 0d | 2006-11-28 | 2006-11-28 |  | 18d |  | start no earlier than 2006-11-28 |  |  |
| 162 | 1.3.1.7 | Finalize Documents |  | 24d | 2006-11-14 | 2006-12-15 | 160 | 4d |  |  | Tech Writing NCICB | 192h |
| 163 | 1.3.1.8 | Final Version of User Documents Complete | milestone | 0d | 2006-12-15 | 2006-12-15 |  | 5d |  | start no earlier than 2006-12-15 |  |  |
| 164 | 1.3.2 | Staging |  | 15d | 2006-11-29 | 2006-12-19 | 152 | 2d |  |  | Orlando; Kunal | 240h |
| 165 | 1.3.2 | Internal Staging Complete | milestone | 0d | 2006-12-19 | 2006-12-19 |  | 3d |  | start no earlier than 2006-12-19 |  |  |
| 166 | 1.3.3 | Push to Production | milestone | 0d | 2006-12-21 | 2006-12-21 |  | 1d |  | start no earlier than 2006-12-21 |  |  |
| 167 | 1.3.5 | Go Live | milestone | 0d | 2006-12-22 | 2006-12-22 |  | 0d |  | start no earlier than 2006-12-22 |  |  |
