# CSM 4.0

Schedule from MS Project, 2007-01-16 to 2007-08-08, A marks actual dates.
NCI

## Calendars

- Standard: Mon-Fri 08:00-12:00, 13:00-17:00; Sat-Sun off. Exceptions (off unless hours are given): 2007-02-05 to 2007-02-07.

## Resources

| Resource |
| --- |
| Kunal |
| Vijay |
| Charles |
| Avinash |
| Steve |
| KunalKunalK |
| QA |
| Kuanl |
| caGRID |
| Satish |
| Kunal/Satish |

## Schedule

| ID | WBS | Task | Type | Duration | Start | Finish | Predecessors | Complete | Remaining | Total slack | Free slack | Constraint | Resources | Work | Actual work |
| --- | --- | --- | --- | --- | --- | --- | --- | --- | --- | --- | --- | --- | --- | --- | --- |
| 1 | 1 | **CSM v4.0** |  | 144d? | 2007-01-16 A | 2007-08-08 |  | 29% | 102.71d? | 0d |  |  |  | 1994.8h | 690.33h |
| 2 | 1.1 | **Inception** |  | 3d | 2007-01-19 A | 2007-01-23 A |  | 100% |  |  |  |  |  | 8h | 8h |
| 3 | 1.1.1 | 4.0 Kickoff meeting | milestone | 0d | 2007-01-19 A | 2007-01-19 A |  | 100% |  |  |  | start no earlier than 2007-01-19 | Kunal; Charles; Steve |  |  |
| 4 | 1.1.2 | Create initial task plan |  | 1d | 2007-01-23 A | 2007-01-23 A |  | 100% |  |  |  |  | Kunal | 8h | 8h |
| 5 | 1.2 | **Support** |  | 27d? | 2007-01-23 A | 2007-03-05 |  | 25% | 20.25d? | 112d |  |  | Kunal [20%] | 168h | 116.49h |
| 6 | 1.2.1 | Application Support |  | 27d? | 2007-01-23 | 2007-03-05 |  |  |  | 100d |  | start no earlier than 2007-01-23 | Kunal [10%] | 21.6h |  |
| 7 | 1.2.2 | Support for caBIG Activities |  | 9d? | 2007-01-23 A | 2007-02-02 A |  | 100% |  |  |  | start no earlier than 2007-01-23 | Kunal [10%] | 7.2h | 7.2h |
| 8 | 1.2.3 | Attend caBIG Conference | milestone | 0d? | 2007-02-05 A | 2007-02-07 A | 7 | 100% |  |  |  | start no earlier than 2007-02-05 | Kunal [42.1%]; Vijay [42.1%]; Charles [42.1%]; Steve [42.1%] | 96h | 96h |
| 9 | 1.3 | **Eloboration** |  | 144d? | 2007-01-16 A | 2007-08-08 |  | 29% | 102.38d? | 0d |  |  |  | 1818.8h | 565.84h |
| 10 | 1.3.1 | **Requiements Gathering** |  | 6.25d | 2007-01-19 A | 2007-01-29 |  | 91% | 0.57d | 134.75d |  |  |  | 22h | 20h |
| 11 | 1.3.1.1 | caCORE User's Meeting + Preperation |  | 1.25d | 2007-01-19 A | 2007-01-22 A |  | 100% |  |  |  | start no earlier than 2007-01-19 | Kunal | 10h | 10h |
| 12 | 1.3.1.2 | Requirements Meeting (BRN/caArray) |  | 0.25d | 2007-01-24 | 2007-01-24 |  |  |  | 125.75d |  | start no earlier than 2007-01-24 | Kunal | 2h |  |
| 13 | 1.3.1.3 | Requirements meeting (iSPY, Rembrandt, CGEMS) |  | 0.25d | 2007-01-25 A | 2007-01-25 A |  | 100% |  |  |  | start no earlier than 2007-01-25 | Kunal | 2h | 2h |
| 14 | 1.3.1.4 | Requirements meeting (caCORE, SDK) |  | 0.25d | 2007-01-25 A | 2007-01-25 A |  | 100% |  |  |  | start no earlier than 2007-01-25 | Kunal | 2h | 2h |
| 15 | 1.3.1.5 | Requirements meeting (SPORES, caMOD) |  | 0.25d | 2007-01-26 A | 2007-01-26 A |  | 100% |  |  |  | start no earlier than 2007-01-26 | Kunal | 2h | 2h |
| 16 | 1.3.1.6 | Requirements meeting (BMS) |  | 0.25d | 2007-01-26 A | 2007-01-26 A |  | 100% |  |  |  | start no earlier than 2007-01-26 | Kunal | 2h | 2h |
| 17 | 1.3.1.7 | Requirements meeting (caGRID) |  | 0.25d | 2007-01-29 A | 2007-01-29 A |  | 100% |  |  |  | start no earlier than 2007-01-29 | Kunal | 2h | 2h |
| 18 | 1.3.2 | **Scope Document** |  | 8d | 2007-01-26 A | 2007-02-09 |  | 90% | 0.8d | 128d |  |  |  | 96h | 84h |
| 19 | 1.3.2.1 | Prepare list of scope items on gforge |  | 1d | 2007-01-26 A | 2007-01-26 |  | 50% | 0.5d | 123d |  | start no earlier than 2007-01-26 | Kunal | 8h | 4h |
| 20 | 1.3.2.2 | Draft scope document |  | 3d | 2007-01-29 A | 2007-01-31 A | 19 | 100% |  |  |  |  | Charles | 24h | 24h |
| 21 | 1.3.2.3 | Estimate LOE for Itertion 1 & 2 scope items |  | 1d | 2007-02-01 A | 2007-02-01 A | 20 | 100% |  |  |  |  | Kunal | 8h | 8h |
| 22 | 1.3.2.4 | Prepare risk list |  | 1d | 2007-02-02 A | 2007-02-02 | 21 | 50% | 0.5d | 118d |  |  | Charles; Kunal | 16h | 8h |
| 23 | 1.3.2.5 | NCICB Review of scope document |  | 2d | 2007-02-01 A | 2007-02-05 A | 20 | 100% |  |  |  |  | Avinash [150%] | 24h | 24h |
| 24 | 1.3.2.6 | Revise scope document |  | 2d | 2007-02-08 A | 2007-02-09 A | 23, 8 | 100% |  |  |  |  | Kunal | 16h | 16h |
| 25 | 1.3.2.7 | Finalize Scope | milestone | 0d | 2007-02-09 | 2007-02-09 | 24 |  |  | 111d | 0d |  | Kunal; Charles |  |  |
| 26 | 1.3.5 | Revise task plan |  | 1d? | 2007-01-23 | 2007-01-23 |  |  |  | 138d |  |  | Charles | 8h |  |

| ID | WBS | Task | Duration | Start | Finish | Predecessors | Complete | Remaining | Total slack | Free slack | Constraint | Resources | Work | Actual work |
| --- | --- | --- | --- | --- | --- | --- | --- | --- | --- | --- | --- | --- | --- | --- |
| 27 | 1.3.6 | **Construction** | 144d | 2007-01-16 A | 2007-08-08 |  | 29% | 102.57d | 0d |  |  |  | 1292.8h | 461.84h |
| 28 | 1.3.6.1 | **Iteration 1** | 44d | 2007-01-16 A | 2007-03-21 |  | 70% | 13.36d | 100d |  |  |  | 456.8h | 286.4h |
| 29 | 1.3.6.1.1 | CSM Application Developers Guide Update | 5d | 2007-01-16 A | 2007-01-22 A |  | 100% |  |  |  | start no earlier than 2007-01-16 | Vijay | 40h | 40h |
| 30 | 1.3.6.1.2 | Regression Junit Development | 8d | 2007-01-23 A | 2007-02-01 A | 29 | 100% |  |  |  |  | Vijay | 64h | 64h |
| 31 | 1.3.4.1.3 | CSM Bug Fixes (GF#3794) | 6d | 2007-02-02 A | 2007-02-14 A | 30 | 100% |  |  |  |  | Vijay | 48h | 48h |
| 32 | 1.3.4.1.4 | **CSM caGRID Integration** | 20d | 2007-02-14 A | 2007-03-13 |  | 71% | 5.7d | 106d |  |  |  | 196h | 134.4h |
| 33 | 1.3.4.1.4.1 | **Client Session is singleton which is enforcing the CSM caGrid Integration project to use snychornization** | 13d | 2007-02-14 A | 2007-03-02 A |  | 100% |  |  |  |  |  | 40h | 40h |
| 34 | 1.3.4.1.4.1.1 | Design | 4d | 2007-02-14 A | 2007-02-19 A |  | 100% |  |  |  | start no earlier than 2007-02-14 | Kunal [50%] | 16h | 16h |
| 35 | 1.3.4.1.4.1.2 | Development | 3d | 2007-02-28 A | 2007-03-02 A | 40 | 100% |  |  |  |  | Kunal | 24h | 24h |
| 36 | 1.3.4.1.4.2 | **Upgrade the CSM/caGRID integration to use new functionality of CSM 3.2** | 10d | 2007-02-14 A | 2007-02-27 A |  | 100% |  |  |  |  |  | 76h | 76h |
| 37 | 1.3.4.1.4.2.1 | Design | 4d | 2007-02-14 A | 2007-02-19 A |  | 100% |  |  |  | start no earlier than 2007-02-14 | Kuanl [50%] | 16h | 16h |
| 38 | 1.3.4.1.4.2.2 | Design Review | 0.5d | 2007-02-20 A | 2007-02-20 A | 37 | 100% |  |  |  |  | caGRID; Satish; Avinash; Kunal | 16h | 16h |
| 39 | 1.3.4.1.4.2.3 | Design update | 0.5d | 2007-02-20 A | 2007-02-20 A | 38 | 100% |  |  |  |  | Kunal | 4h | 4h |
| 40 | 1.3.4.1.4.2.4 | Development | 5d | 2007-02-21 A | 2007-02-27 A | 39 | 100% |  |  |  |  | Kunal | 40h | 40h |
| 41 | 1.3.4.1.4.3 | **Seemless Security Integration** | 10d | 2007-02-28 A | 2007-03-13 |  | 23% | 7.7d | 106d |  |  |  | 80h | 18.4h |
| 42 | 1.3.4.1.4.3.1 | Design | 2d | 2007-02-28 A | 2007-03-01 A | 40 | 100% |  |  |  |  | Kunal | 16h | 16h |
| 43 | 1.3.4.1.4.3.2 | **Development** | 6d | 2007-03-02 A | 2007-03-09 |  | 5% | 5.7d | 108d |  |  |  | 48h | 2.4h |
| 44 | 1.3.4.1.4.3.2.1 | **Integration of new Installation Process into SDK** | 3d | 2007-03-02 A | 2007-03-06 |  | 10% | 2.7d | 111d |  |  |  | 24h | 2.4h |
| 45 | 1.3.4.1.4.3.2.1.1 | Code | 3d | 2007-03-02 A | 2007-03-06 |  | 10% | 2.7d | 111d |  | start no earlier than 2007-03-02 | Kunal | 24h | 2.4h |
| 46 | 1.3.4.1.4.3.2.2 | **Upgrade to CSM to Support Grid ability to leverage new CSM installation steps** | 3d | 2007-03-07 | 2007-03-09 |  |  |  | 106d | 0d |  |  | 24h |  |
| 47 | 1.3.4.1.4.3.2.2.1 | Code | 3d | 2007-03-07 | 2007-03-09 | 38 |  |  | 106d |  | start no earlier than 2007-03-07 | Kunal | 24h |  |
| 48 | 1.3.4.1.4.3.3 | **Documentation** | 2d | 2007-03-12 | 2007-03-13 |  |  |  | 106d |  |  |  | 16h |  |
| 49 | 1.3.4.1.4.3.3.1 | SDK Programmer's/Technical Guide | 2d | 2007-03-12 | 2007-03-13 | 46 |  |  | 106d |  |  | Kunal/Satish | 16h |  |
| 50 | 1.3.4.1.5 | **QA** | 5d | 2007-03-14 | 2007-03-20 |  |  |  | 1.48d | 0d |  | Kunal | 84.8h |  |
| 51 | 1.3.4.1.5.1 | Test Execution (In Sync With SDK Testing) | 5d | 2007-03-14 | 2007-03-20 |  |  |  | 85d |  | start no earlier than 2007-03-14 | QA | 40h |  |
| 52 | 1.3.4.1.5.2 | Test Support | 3d | 2007-03-14 | 2007-03-16 |  |  |  | 1.48d | 0d | start no earlier than 2007-03-14 | Kunal [20%] | 4.8h |  |

| ID | WBS | Task | Type | Duration | Start | Finish | Predecessors | Complete | Remaining | Total slack | Free slack | Resources | Work | Actual work |
| --- | --- | --- | --- | --- | --- | --- | --- | --- | --- | --- | --- | --- | --- | --- |
| 53 | 1.3.4.1.6 | **Iteration Plan** |  | 1d | 2007-03-21 | 2007-03-21 |  |  |  | 70d |  |  | 24h |  |
| 54 | 1.3.4.1.6.1 | Review Client Feature Request/Revise Task Plan |  | 1d | 2007-03-21 | 2007-03-21 | 50 |  |  | 85d | 0d | Charles; Avinash; Satish | 24h |  |
| 55 | 1.3.4.2 | **Iteration 2** |  | 57d | 2007-02-15 A | 2007-05-04 |  | 27% | 41.78d | 68d |  |  | 812h | 175.44h |
| 56 | 1.3.4.2.1 | **Release 4.0 Beta 1** |  | 57d | 2007-02-15 A | 2007-05-04 |  | 27% | 41.78d | 68d |  |  | 812h | 175.44h |
| 57 | 1.3.4.2.1.1 | Update Requirements Document |  | 5d | 2007-03-07 A | 2007-03-13 A | 54 | 100% |  |  |  | Charles [10%] | 4h | 4h |
| 58 | 1.3.4.2.1.2 | **Instance Level Security** |  | 25d | 2007-03-19 A | 2007-04-20 |  | 14% | 21.5d | 1.48d | 0d |  | 200h | 28h |
| 59 | 1.3.4.2.1.2.1 | Design |  | 7d | 2007-03-19 A | 2007-03-27 | 52 | 50% | 3.5d | 1.48d | 0d | Kunal | 56h | 28h |
| 60 | 1.3.4.2.1.2.2 | Development |  | 18d | 2007-03-28 | 2007-04-20 | 59 |  |  | 1.48d |  | Kunal | 144h |  |
| 61 | 1.3.4.2.1.3 | Assist BMS to Upgrade to CSM 3.2 to come on the same version to intiate co development |  | 3d | 2007-04-23 | 2007-04-25 | 58 |  |  | 75d |  | Kunal | 24h |  |
| 62 | 1.3.4.2.1.4 | Query optimization and corrections to queries |  | 6d | 2007-02-15 A | 2007-02-22 A | 31 | 100% |  |  |  | Vijay | 48h | 48h |
| 63 | 1.3.4.2.1.5 | Support Digital Certificates as credentials |  | 8d | 2007-02-23 A | 2007-03-06 | 62 | 95% | 0.4d | 88d | 0d | Vijay | 64h | 60.8h |
| 64 | 1.3.4.2.1.6 | 21CFR Part 11 Support |  | 5d | 2007-03-07 | 2007-03-13 | 63 |  |  | 88d | 0d | Vijay | 40h |  |
| 65 | 1.3.4.2.1.7 | AuthenticationManager to correctly use the user provided lockout parameters |  | 1d | 2007-03-14 | 2007-03-14 | 64 |  |  | 88d | 0d | Vijay | 8h |  |
| 66 | 1.3.4.2.1.8 | UPT Fixes |  | 3d | 2007-03-15 A | 2007-03-19 | 65 | 95% | 0.15d | 88d | 0d | Vijay | 24h | 22.8h |
| 67 | 1.3.4.2.1.9 | Merge User Provisioning Manager & Authorization Manager Interfaces |  | 3d | 2007-03-20 | 2007-03-22 | 66 |  |  | 88d | 0d | Vijay | 24h |  |
| 68 | 1.3.4.2.1.10 | Improve Installation for CSM and UPT especially |  | 3d | 2007-03-23 | 2007-03-27 | 67 |  |  | 88d | 0d | Vijay | 24h |  |
| 69 | 1.3.4.2.1.11 | Support Postgres Database |  | 4d | 2007-03-28 | 2007-04-02 | 68 |  |  | 88d | 0d | Vijay | 32h |  |
| 70 | 1.3.4.2.1.12 | **QA** |  | 38d | 2007-03-14 | 2007-05-04 |  |  |  | 29.48d |  |  | 280h |  |
| 71 | 1.3.4.2.1.12.1 | Requirements Analysis |  | 5d | 2007-03-14 | 2007-03-20 | 57 |  |  | 81d | 0d | QA | 40h |  |
| 72 | 1.3.4.2.1.12.2 | Test Plan Development |  | 10d | 2007-03-21 | 2007-04-03 | 71 |  |  | 81d | 13d | QA | 80h |  |
| 73 | 1.3.4.2.1.12.3 | Test Execution |  | 10d | 2007-04-23 | 2007-05-04 | 58, 72 |  |  | 68d |  | QA | 80h |  |
| 74 | 1.3.4.2.1.12.4 | Test Support |  | 5d | 2007-04-23 | 2007-04-27 | 58 |  |  | 1.48d | 0d | Vijay; Kunal | 80h |  |
| 75 | 1.3.4.2.1.13 | Release Packaging |  | 2d | 2007-04-30 A | 2007-05-01 | 74 | 74% | 0.52d | 0d |  | Vijay | 16h | 11.84h |
| 76 | 1.3.4.2.1.14 | Release 4.0 Beta 1 | milestone | 0d | 2007-05-01 | 2007-05-01 | 75 |  |  | 0d |  |  |  |  |

| ID | WBS | Task | Type | Duration | Start | Finish | Predecessors | Total slack | Free slack | Constraint | Resources | Work |
| --- | --- | --- | --- | --- | --- | --- | --- | --- | --- | --- | --- | --- |
| 77 | 1.3.4.2.1.15 | **Iteration Plan** |  | 1d | 2007-05-02 | 2007-05-02 |  | 70d |  |  |  | 24h |
| 78 | 1.3.4.2.1.15.1 | Review Client Feature Request/Revise Task Plan |  | 1d | 2007-05-02 | 2007-05-02 | 76 | 70d |  |  | Charles; Avinash; Satish | 24h |
| 79 | 1.3.4.3 | **Iteration 3** |  | 26d | 2007-05-02 | 2007-06-06 |  | 0d |  |  |  | 24h |
| 80 | 1.3.4.3.1 | Release 4.0 Beta 2 |  | 25d | 2007-05-02 | 2007-06-05 | 76 | 0d |  |  |  |  |
| 81 | 1.3.4.3.2 | **Iteration Plan** |  | 1d | 2007-06-06 | 2007-06-06 |  | 0d |  |  |  | 24h |
| 82 | 1.3.4.3.2.1 | Review Client Feature Request/Revise Task Plan |  | 1d | 2007-06-06 | 2007-06-06 | 80 | 0d |  |  | Charles; Avinash; Satish | 24h |
| 83 | 1.3.4.4 | **Iteration 4** |  | 25d | 2007-06-07 | 2007-07-11 |  | 0d |  |  |  |  |
| 84 | 1.3.4.4.1 | Release 4.0 Beta 2 |  | 25d | 2007-06-07 | 2007-07-11 | 81 | 0d |  |  |  |  |
| 85 | 1.3.4.5 | Integration Test |  | 10d | 2007-07-12 | 2007-07-25 | 83 | 0d |  |  |  |  |
| 86 | 1.3.4.6 | UAT Test |  | 10d | 2007-07-26 | 2007-08-08 | 85 | 0d |  |  |  |  |
| 87 | 1.3.7 | **Transition** |  | 25d | 2007-06-19 | 2007-07-23 |  | 12d |  |  |  | 400h |
| 88 | 1.3.5.1 | **Documentation** |  | 25d | 2007-06-19 | 2007-07-23 |  | 12d | 0d |  |  | 400h |
| 89 | 1.3.7.1.1 | New technical guide |  | 10d | 2007-06-19 | 2007-07-02 |  | 12d | 0d | start no earlier than 2007-06-19 | Vijay; Kunal | 160h |
| 90 | 1.3.7.1 | New users guide |  | 10d | 2007-07-03 | 2007-07-16 | 89 | 12d | 0d |  | Vijay; Kunal | 160h |
| 91 | 1.3.7.1.2 | How to example |  | 5d | 2007-07-17 | 2007-07-23 | 90 | 12d |  |  | Vijay; Kunal | 80h |
| 92 | 1.3.7.1.3 | 4.0 Release Complete | milestone | 0d | 2007-07-23 | 2007-07-23 | 88 | 12d |  |  |  |  |
